Schedule from MS Project, 2011-01-13 to 2012-03-30, A marks actual dates.

## Calendars

- Standard: Mon-Fri 08:00-12:00, 13:00-17:00; Sat-Sun off. Exceptions (off unless hours are given): 2011-05-30, 2011-07-04, 2011-09-05.

## Resources

| Resource |
| --- |
| Prasad |
| Dan |
| Vijay |
| Xiaoling |
| Aynur |
| Greg |
| (Xiaoling) |
| ` |

## Schedule

| ID | WBS | Task | Type | Duration | Start | Finish | Predecessors | Complete | Constraint | Resources | Work | Actual work |
| --- | --- | --- | --- | --- | --- | --- | --- | --- | --- | --- | --- | --- |
| 1 | 1 | **SDK 4.2.3** |  | 50.7d | 2011-03-15 A | 2011-05-24 A |  | 100% |  |  | 392h | 392h |
| 2 | 1.1 | GF 30729 Provide option to generate JUnit Tests for Logical Model Domain classes [already done] | milestone | 0d | 2011-03-15 A | 2011-03-15 A |  | 100% | start no earlier than 2011-03-15 |  |  |  |
| 3 | 1.2 | GF 30749 Third-Party Jars within the Code Generation Process |  | 5d | 2011-03-15 A | 2011-03-21 A |  | 100% | start no earlier than 2011-03-15 | Dan [75%] | 30h | 30h |
| 4 | 1.3 | GF 30753 Generation of the "not-null" Attribute with the "property" Element Node (not-null constraints) |  | 3d | 2011-03-30 A | 2011-04-01 A |  | 100% | start no earlier than 2011-03-30 | Vijay | 24h | 24h |
| 5 | 1.4 | GF 30748 Bi-directional self-associations |  | 5d | 2011-04-04 A | 2011-04-08 A |  | 100% | start no earlier than 2011-04-04 | Vijay | 40h | 40h |
| 6 | 1.5 | **GF 30510 Support (code generation) for interfaces** |  | 9d | 2011-03-30 A | 2011-04-11 A |  | 100% |  |  | 72h | 72h |
| 7 | 1.5.1 | Design |  | 2d | 2011-03-30 A | 2011-03-31 A |  | 100% | start no earlier than 2011-03-30 | Prasad | 16h | 16h |
| 8 | 1.5.2 | XMI Handler |  | 3d | 2011-04-01 A | 2011-04-05 A | 7 | 100% |  | Prasad | 24h | 24h |
| 9 | 1.5.3 | Code generation |  | 3d | 2011-04-06 A | 2011-04-08 A | 8 | 100% |  | Prasad | 24h | 24h |
| 10 | 1.5.4 | Test |  | 1d | 2011-04-11 A | 2011-04-11 A | 9 | 100% |  | Prasad | 8h | 8h |
| 11 | 1.6 | Dev testing and documentation |  | 4d | 2011-04-12 A | 2011-04-15 A | 2, 3, 4, 5, 10 | 100% |  | Prasad | 32h | 32h |
| 12 | 1.7 | Ivy support (XMI handler) |  | 2d | 2011-04-18 A | 2011-04-19 A | 11 | 100% |  | Prasad [25%] | 4h | 4h |
| 13 | 1.8 | QA test plan |  | 3d | 2011-04-14 A | 2011-04-18 A | 11FF | 100% | must start on 2011-04-14 | Xiaoling | 24h | 24h |
| 14 | 1.9 | QA |  | 9d | 2011-04-20 A | 2011-05-02 A | 12, 13 | 100% |  | Xiaoling | 72h | 72h |
| 15 | 1.10 | QA support |  | 7d | 2011-04-20 A | 2011-04-28 A | 14SS | 100% |  | Prasad [25%] | 14h | 14h |
| 16 | 1.11 | Optional QA for 30508, 30510, 30511, 30524 |  | 10d | 2011-05-09 A | 2011-05-24 A | 14 | 100% | start no earlier than 2011-05-09 | Xiaoling | 80h | 80h |
| 19 | 2 | **SDK 4.2.3 alternate database testing** |  | 18d? | 2011-06-08 A | 2011-07-01 A |  | 100% |  |  | 112h | 112h |
| 20 | 2.1 | Dev-supplied JUnits on Oracle |  | 2d | 2011-06-14 A | 2011-06-15 A |  | 100% | start no earlier than 2011-06-14 | Xiaoling | 16h | 16h |
| 21 | 2.2 | Smoke-test and 4.2.3 regression on Oracle |  | 3d | 2011-06-16 A | 2011-06-20 A | 20 | 100% |  | Xiaoling | 24h | 24h |
| 22 | 2.3 | Postgres installation issues |  | 5d? | 2011-06-08 A | 2011-06-14 A |  | 100% | start no earlier than 2011-06-08 |  |  |  |
| 23 | 2.4 | Build/deployment problems with Postgres |  | 2d | 2011-06-21 A | 2011-06-22 A | 22, 21 | 100% |  | Xiaoling | 16h | 16h |
| 24 | 2.5 | Dev-supplied JUnits on Postgres |  | 2d | 2011-06-23 A | 2011-06-24 A | 21, 23, 22 | 100% |  | Xiaoling | 16h | 16h |
| 25 | 2.6 | Smoke-test and 4.2.3 regression on Postgres |  | 5d | 2011-06-27 A | 2011-07-01 A | 24 | 100% |  | Xiaoling | 40h | 40h |
| 28 | 3 | **GF 31030 - CSM/UPT patch for EMMES (UPT-Tomcat support)** |  | 44d? | 2011-04-21 A | 2011-06-22 A |  | 100% |  |  | 149.46h | 149.46h |
| 29 | 3.1 | Installation instructions for Tomcat |  | 3d | 2011-04-21 A | 2011-05-04 A |  | 100% | start no earlier than 2011-04-21 | Prasad [75%] | 17.46h | 17.46h |
| 30 | 3.2 | UPT fixes |  | 6d | 2011-04-25 A | 2011-05-02 A |  | 100% | start no earlier than 2011-04-25 | Prasad [75%] | 36h | 36h |
| 31 | 3.3 | packaging |  | 1d | 2011-05-12 A | 2011-05-12 A | 30 | 100% | start no earlier than 2011-05-12 | Prasad | 8h | 8h |
| 32 | 3.4 | QA (limited to Tomcat and mySQL) |  | 7d | 2011-05-13 A | 2011-05-23 A | 31 | 100% | start no earlier than 2011-05-04 | Aynur | 56h | 56h |
| 33 | 3.5 | Release activities |  | 2d? | 2011-05-24 A | 2011-05-25 A | 32 | 100% |  | Prasad | 16h | 16h |

| ID | WBS | Task | Duration | Start | Finish | Predecessors | Complete | Remaining | Total slack | Constraint | Resources | Work | Actual work |
| --- | --- | --- | --- | --- | --- | --- | --- | --- | --- | --- | --- | --- | --- |
| 34 | 3.6 | **Alternate distribution packages** | 12d | 2011-06-07 A | 2011-06-22 A |  | 100% |  |  |  |  | 16h | 16h |
| 35 | 3.6.1 | Smoke-test GUI installer distribution | 4d | 2011-06-07 A | 2011-06-10 A |  | 100% |  |  | start no earlier than 2011-06-07 | Greg [25%] | 8h | 8h |
| 36 | 3.6.2 | Smoke-test upgrade distribution | 4d | 2011-06-15 A | 2011-06-22 A |  | 100% |  |  | start no earlier than 2011-06-15 | Greg [25%] | 8h | 8h |
| 39 | 4 | **Technology stack upgrade to 2011 "current" and "future"** | 118d? | 2011-05-13 A | 2011-10-28 |  | 59% | 48.37d? | 0d |  |  | 1686h | 1084.8h |
| 40 | 4.1 | CLM/LLT (base CLM only, CSM relies on CLM) | 1d | 2011-05-13 A | 2011-05-13 A |  | 100% |  |  | start no earlier than 2011-05-13 | Prasad | 8h | 8h |
| 41 | 4.2 | **CSM/UPT/CGMM** | 17d | 2011-05-16 A | 2011-06-08 A | 40 | 100% |  |  |  |  | 88h | 88h |
| 42 | 4.2.1 | JDK (migrate - done for a patch) | 1d | 2011-05-16 A | 2011-05-16 A |  | 100% |  |  | start no earlier than 2011-05-11 | Prasad | 8h | 8h |
| 43 | 4.2.2 | JBoss (migrate - done for a patch) | 1d | 2011-05-17 A | 2011-05-17 A | 42 | 100% |  |  |  | Prasad | 8h | 8h |
| 44 | 4.2.3 | UPT/Tomcat (migrate - in progress for a patch) | 1d | 2011-05-18 A | 2011-05-18 A | 43 | 100% |  |  |  | Prasad | 8h | 8h |
| 45 | 4.2.4 | Other | 2d | 2011-05-23 A | 2011-05-26 A | 44 | 100% |  |  | start no earlier than 2011-05-23 | Prasad | 16h | 16h |
| 46 | 4.2.5 | CGMM | 6d | 2011-06-01 A | 2011-06-08 A |  | 100% |  |  | start no earlier than 2011-06-01 | Prasad | 48h | 48h |
| 47 | 4.3 | CLM/LLT (LLT relies on CSM) | 2d | 2011-05-27 A | 2011-05-31 A | 41 | 100% |  |  |  | Prasad | 16h | 16h |
| 48 | 4.4 | XMI Handler (initial) | 2d | 2011-06-09 A | 2011-06-10 A |  | 100% |  |  | start no earlier than 2011-06-09 | Prasad [50%] | 8h | 8h |
| 49 | 4.5 | **SDK** | 15d | 2011-06-14 A | 2011-07-05 A | 48 | 100% |  |  |  |  | 72h | 72h |
| 50 | 4.5.1 | JDK | 1d | 2011-06-14 A | 2011-06-14 A |  | 100% |  |  | must start on 2011-06-14 | Prasad | 8h | 8h |
| 51 | 4.5.2 | Jboss | 1d | 2011-06-15 A | 2011-06-15 A | 50 | 100% |  |  |  | Prasad | 8h | 8h |
| 52 | 4.5.3 | Spring | 3d | 2011-06-22 A | 2011-06-24 A | 51 | 100% |  |  | must start on 2011-06-22 | Prasad [50%] | 12h | 12h |
| 53 | 4.5.4 | Hibernate | 2d | 2011-06-27 A | 2011-06-28 A | 52 | 100% |  |  |  | Prasad | 16h | 16h |
| 54 | 4.5.5 | Other technologies | 2d | 2011-06-29 A | 2011-06-30 A | 53 | 100% |  |  |  | Prasad [75%] | 12h | 12h |
| 55 | 4.5.6 | CQL->HQL workaround and Junit updates [aborted] | 2d | 2011-07-01 A | 2011-07-05 A | 54 | 100% |  |  | start no earlier than 2011-07-01 | Prasad | 16h | 16h |
| 56 | 4.6 | XMI Handler (formalized) | 1d? | 2011-07-06 A | 2011-07-06 A | 49 | 100% |  |  |  | Prasad | 8h | 8h |
| 57 | 4.7 | **Refocus from 2010 to 2011 "current" tech stack** | 4d | 2011-07-07 A | 2011-07-12 A |  | 100% |  |  |  |  | 32h | 32h |
| 58 | 4.7.1 | Re-version CLM API 4.2 to 4.1.1 | 1d | 2011-07-07 A | 2011-07-07 A |  | 100% |  |  | start no earlier than 2011-07-07 | Prasad | 8h | 8h |
| 59 | 4.7.2 | Re-version CSM 4.3 to 4.2.3 | 1d | 2011-07-08 A | 2011-07-08 A | 58 | 100% |  |  | start no earlier than 2011-07-08 | Prasad | 8h | 8h |
| 60 | 4.7.3 | Apply tech upgrades against SDK 4.4 to make 4.4.1 | 1.5d | 2011-07-11 A | 2011-07-12 A | 58 | 100% |  |  | start no earlier than 2011-07-11 | Prasad | 12h | 12h |
| 61 | 4.7.4 | Re-version CLM LLT 4.2 to 4.1.1 | 0.5d | 2011-07-12 A | 2011-07-12 A | 60 | 100% |  |  | start no earlier than 2011-07-12 | Prasad | 4h | 4h |

| ID | WBS | Task | Type | Duration | Start | Finish | Predecessors | Complete | Remaining | Total slack | Free slack | Constraint | Resources | Work | Actual work |
| --- | --- | --- | --- | --- | --- | --- | --- | --- | --- | --- | --- | --- | --- | --- | --- |
| 62 | 4.8 | **2011 "future"** |  | 13d | 2011-08-24 A | 2011-09-12 | 184 | 54% | 6d | 17d |  | start no earlier than 2011-08-02 |  | 60h | 26h |
| 63 | 4.8.1 | CSM 4.2.4 (Spring/Struts/Ant) |  | 3d | 2011-08-24 A | 2011-08-26 A |  | 100% |  |  |  | start no earlier than 2011-08-24 | Prasad [75%] | 18h | 18h |
| 64 | 4.8.2 | CSM 4.2.4 - add backward compatibility fixes made in 4.2.3 |  | 2d | 2011-09-06 | 2011-09-07 | 63, 78 |  |  | 3d | 0d | start no earlier than 2011-08-29 | Prasad [75%] | 12h |  |
| 65 | 4.8.3 | **SDK 4.5** |  | 9d | 2011-08-29 A | 2011-09-09 |  | 57% | 3.86d | 3d | 0d |  |  | 22h | 8h |
| 66 | 4.8.3.1 | Merge 4.2.3 enhancements into 4.5 |  | 5d | 2011-08-29 A | 2011-09-02 |  | 80% | 1d | 0d |  | start no earlier than 2011-08-29 | Dan [25%] | 10h | 8h |
| 67 | 4.8.3.2 | Sprint, Struts, Ant upgrades |  | 2d | 2011-09-08 | 2011-09-09 | 66, 64 |  |  | 3d |  | start no earlier than 2011-08-29 | Prasad [75%] | 12h |  |
| 68 | 4.8.4 | CLM 4.1.2 (Spring/Struts/Ant) |  | 1d | 2011-09-12 | 2011-09-12 | 65 |  |  | 14d | 12d | start no earlier than 2011-08-24 | Prasad | 8h |  |
| 69 | 4.9 | Workbench ("current") |  | 4d | 2011-09-06 | 2011-09-09 | 66 |  |  | 0d |  |  | Dan [25%] | 8h |  |
| 70 | 4.10 | (WebSSO?) | milestone | 0d | 2011-09-09 | 2011-09-09 | 69 |  |  | 35d |  |  |  |  |  |
| 71 | 4.11 | **QA 2010 "current" [stopped]** |  | 8d | 2011-06-27 A | 2011-07-07 A |  | 100% |  |  |  |  |  | 80h | 80h |
| 72 | 4.11.1 | CLM/CSM [stopped] |  | 8d | 2011-06-27 A | 2011-07-07 A | 47 | 100% |  |  |  | start no earlier than 2011-06-27 | Aynur | 64h | 64h |
| 73 | 4.11.2 | SDK [stopped] |  | 2d | 2011-07-06 A | 2011-07-07 A | 49 | 100% |  |  |  | start no earlier than 2011-07-05 | Xiaoling | 16h | 16h |
| 74 | 4.12 | SDK 4.4.1 and CSM 4.2.3 bug fixes |  | 5d | 2011-07-18 A | 2011-07-22 A |  | 100% |  |  |  | start no earlier than 2011-07-18 | Prasad [75%] | 30h | 30h |
| 75 | 4.13 | QA support and minor bug fixes (2011 "current") |  | 11d | 2011-07-18 A | 2011-08-01 A |  | 100% |  |  |  | start no earlier than 2011-07-18 | Prasad [25%] | 22h | 22h |
| 76 | 4.14 | QA support and minor bug fixes (2011 "current") |  | 14d | 2011-08-02 A | 2011-08-23 A |  | 100% |  |  |  | start no earlier than 2011-08-02 | Prasad | 112h | 112h |
| 77 | 4.15 | QA support and minor bug fixes (2011 "current") |  | 9d | 2011-08-24 | 2011-09-06 |  |  |  | 35d |  | start no earlier than 2011-08-24 | Prasad [25%] | 18h |  |
| 78 | 4.16 | testing and fixes for backward compatibility in CSM 4.2.3 |  | 5d | 2011-08-29 A | 2011-09-02 A |  | 100% |  |  |  | start no earlier than 2011-08-29 | Prasad [75%] | 30h | 30h |
| 79 | 4.17 | template investigation (SDK-705 and SDK-1354) |  | 3d | 2011-08-25 | 2011-08-29 |  |  |  | 40d |  | start no earlier than 2011-08-25 | Greg [50%] | 12h |  |
| 80 | 4.18 | template modifications (SDK-705 and SDK-1354) |  | 1d? | 2011-09-06 | 2011-09-06 | 66 |  |  | 35d |  | start no earlier than 2011-08-29 | Dan [25%] | 2h |  |
| 81 | 4.19 | **Alternate distribution packages - CSM 4.2.3** |  | 8d | 2011-09-06 | 2011-09-15 |  |  |  | 11d | 0d |  |  | 16h |  |
| 82 | 4.19.1 | Smoke-test GUI installer distribution |  | 4d | 2011-09-06 | 2011-09-09 | 78 |  |  | 8d | 0d | start no earlier than 2011-08-29 | Greg [25%] | 8h |  |
| 83 | 4.19.2 | Smoke-test upgrade distribution |  | 4d | 2011-09-12 | 2011-09-15 | 82 |  |  | 8d |  | start no earlier than 2011-08-29 | Greg [25%] | 8h |  |
| 84 | 4.20 | **Alternate distribution packages - CSM 4.2.4** |  | 8d | 2011-09-16 | 2011-09-27 | 64, 81 |  |  | 11d |  |  |  | 16h |  |
| 85 | 4.20.1 | Smoke-test GUI installer distribution |  | 4d | 2011-09-16 | 2011-09-21 |  |  |  | 8d | 0d | start no earlier than 2011-08-29 | Greg [25%] | 8h |  |
| 86 | 4.20.2 | Smoke-test upgrade distribution |  | 4d | 2011-09-22 | 2011-09-27 | 85 |  |  | 8d |  | start no earlier than 2011-08-29 | Greg [25%] | 8h |  |

| ID | WBS | Task | Duration | Start | Finish | Predecessors | Complete | Remaining | Total slack | Free slack | Constraint | Resources | Work | Actual work |
| --- | --- | --- | --- | --- | --- | --- | --- | --- | --- | --- | --- | --- | --- | --- |
| 87 | 4.21 | **QA 2011 "current"** | 47d? | 2011-07-11 A | 2011-09-14 |  | 84% | 7.42d? | 5d | 0d |  |  | 676h | 552.8h |
| 88 | 4.21.1 | **CSM 4.2.3** | 43d | 2011-07-11 A | 2011-09-08 | 59 | 88% | 4.98d | 5d | 0d |  |  | 304h | 268.8h |
| 89 | 4.21.1.1 | set-up and 1st round | 6d | 2011-07-11 A | 2011-07-18 A | 59 | 100% |  |  |  |  | Aynur | 48h | 48h |
| 90 | 4.21.1.2 | update test cases (as needed) | 1d | 2011-07-19 A | 2011-07-19 A | 59 | 100% |  |  |  | start no earlier than 2011-07-19 | Aynur | 8h | 8h |
| 91 | 4.21.1.3 | UPT regression - mySQL | 6d | 2011-07-20 A | 2011-07-27 A |  | 100% |  |  |  | start no earlier than 2011-07-20 | Aynur | 48h | 48h |
| 92 | 4.21.1.4 | deployment testing - Oracle and PostgreSQL | 2d | 2011-07-28 A | 2011-07-29 A |  | 100% |  |  |  | start no earlier than 2011-07-28 | Aynur | 16h | 16h |
| 93 | 4.21.1.5 | UPT regression - Oracle | 4d | 2011-08-01 A | 2011-08-04 A | 92 | 100% |  |  |  |  | Aynur | 32h | 32h |
| 94 | 4.21.1.6 | instance level security | 5d | 2011-08-05 A | 2011-08-11 A | 93 | 100% |  |  |  |  | Aynur | 40h | 40h |
| 95 | 4.21.1.7 | UPT regression - PostgreSQL | 4d | 2011-08-12 A | 2011-08-17 A | 94 | 100% |  |  |  |  | Aynur | 32h | 32h |
| 96 | 4.21.1.8 | API testing | 7d | 2011-08-18 A | 2011-09-02 | 95 | 80% | 1.4d | 2d | 0d | start no earlier than 2011-08-18 | Aynur | 56h | 44.8h |
| 97 | 4.21.1.9 | backward compatibility testing | 3d | 2011-09-06 | 2011-09-08 | 96 |  |  | 2d |  | start no earlier than 2011-09-06 | Aynur | 24h |  |
| 98 | 4.21.2 | CLM 4.1.1 | 3d | 2011-09-09 | 2011-09-13 | 61, 88 |  |  | 2d | 0d | start no earlier than 2011-06-27 | Aynur | 24h |  |
| 99 | 4.21.3 | CSM/CLM test report | 1d | 2011-09-14 | 2011-09-14 | 88, 98 |  |  | 2d | 0d | start no earlier than 2011-08-02 | Aynur | 8h |  |
| 100 | 4.21.4 | **SDK 4.4.1** | 42.5d? | 2011-07-12 A | 2011-09-09 |  | 92% | 3.24d? | 0d |  |  |  | 316h | 284h |
| 101 | 4.21.4.1 | set-up and initial tests | 3.5d | 2011-07-12 A | 2011-07-15 A | 60 | 100% |  |  |  |  | Xiaoling | 28h | 28h |
| 102 | 4.21.4.2 | Oracle database including junit tests | 8d | 2011-07-18 A | 2011-07-27 A | 101 | 100% |  |  |  |  | Xiaoling | 64h | 64h |
| 103 | 4.21.4.3 | Tomcat 6.0.20 with database Oracle and MySQL, Junit tests | 6d | 2011-07-28 A | 2011-08-04 A | 102 | 100% |  |  |  |  | Xiaoling | 48h | 48h |
| 104 | 4.21.4.4 | jboss 5.1.0 with database Oracle and MySQL, Junit tests | 2d | 2011-08-05 A | 2011-08-08 A | 103 | 100% |  |  |  |  | Xiaoling | 16h | 16h |
| 105 | 4.21.4.5 | post-fix retests and backward compatibility tests | 4d | 2011-08-09 A | 2011-08-12 A | 104 | 100% |  |  |  |  | Xiaoling | 32h | 32h |
| 106 | 4.21.4.6 | Tomcat and Jboss with PostgreSQL database and Junit tests [split] | 3d | 2011-08-15 A | 2011-08-17 A | 105 | 100% |  |  |  |  | Xiaoling | 24h | 24h |
| 107 | 4.21.4.7 | PostgreSQL availability and issues (?) | 13d? | 2011-08-08 A | 2011-08-24 A |  | 100% |  |  |  | start no earlier than 2011-08-08 |  |  |  |
| 108 | 4.21.4.8 | verification of Grid authentication fix | 2d | 2011-08-18 A | 2011-08-19 A |  | 100% |  |  |  | start no earlier than 2011-08-18 | Xiaoling | 16h | 16h |
| 109 | 4.21.4.9 | Tomcat and Jboss with PostgreSQL database and Junit tests | 4d | 2011-08-25 A | 2011-08-30 A | 107 | 100% |  |  |  | start no earlier than 2011-08-25 | Xiaoling | 32h | 32h |
| 110 | 4.21.4.10 | adding and modifying *.java test cases in Junit, local-client, and remote client for Writable API; | 3d | 2011-08-31 A | 2011-09-02 A | 109 | 100% |  |  |  | start no earlier than 2011-08-02 | Xiaoling | 24h | 24h |
| 111 | 4.21.4.11 | testing with caGrid 1.4 | 3d | 2011-09-06 | 2011-09-08 | 110 |  |  | 0d |  | start no earlier than 2011-08-02 | Xiaoling | 24h |  |
| 112 | 4.21.4.12 | documentation | 1d | 2011-09-09 | 2011-09-09 | 111 |  |  | 0d |  | start no earlier than 2011-08-02 | Xiaoling | 8h |  |
| 113 | 4.21.5 | Workbench | 3d | 2011-09-12 | 2011-09-14 | 100, 69 |  |  | 0d |  | start no earlier than 2011-09-06 | Xiaoling | 24h |  |
| 114 | 4.22 | Release activities 2011 current - concurrent with QA | 3d | 2011-09-12 | 2011-09-14 | 87FF |  |  | 12d | 1d | start no earlier than 2011-07-20 | Prasad [50%] | 12h |  |
| 115 | 4.23 | Release activities 2011 "current" - post QA | 5d | 2011-09-16 | 2011-09-22 | 87, 114, 81 |  |  | 11d |  |  | Prasad [50%] | 20h |  |

| ID | WBS | Task | Type | Duration | Start | Finish | Predecessors | Complete | Remaining | Total slack | Free slack | Constraint | Resources | Work | Actual work |
| --- | --- | --- | --- | --- | --- | --- | --- | --- | --- | --- | --- | --- | --- | --- | --- |
| 116 | 4.24 | **QA 2011 "future"** |  | 20d | 2011-09-15 | 2011-10-12 |  |  |  | 0d |  |  |  | 280h |  |
| 117 | 4.24.1 | CSM/UPT 4.2.4 |  | 10d | 2011-09-15 | 2011-09-28 | 99, 64 |  |  | 5d | 0d | start no earlier than 2011-07-22 | Aynur | 80h |  |
| 118 | 4.24.2 | CLM/LLT 4.1.2 |  | 5d | 2011-09-29 | 2011-10-05 | 117, 68 |  |  | 5d |  | start no earlier than 2011-06-27 | Aynur | 40h |  |
| 119 | 4.24.3 | SDK 4.5 |  | 20d | 2011-09-15 | 2011-10-12 | 65, 113 |  |  | 0d |  | start no earlier than 2011-06-24 | Xiaoling | 160h |  |
| 120 | 4.25 | Release activities 2011 "future" - concurrent with QA |  | 3d | 2011-10-10 | 2011-10-12 | 116FF, 115 |  |  | 0d |  |  | Prasad [50%] | 12h |  |
| 121 | 4.26 | Release activities 2011 "future" - post QA |  | 5d | 2011-10-13 | 2011-10-19 | 116, 115, 120, 84 |  |  | 0d |  | start no earlier than 2011-07-20 | Prasad [50%] | 20h |  |
| 122 | 4.27 | **QA for upgraded non-core applications (not listed in tech stacks)** |  | 3d | 2011-10-13 | 2011-10-17 |  |  |  | 2d |  |  |  |  |  |
| 123 | 4.27.1 | CGMM |  | 3d | 2011-10-13 | 2011-10-17 | 116 |  |  | 2d |  | start no earlier than 2011-08-22 |  |  |  |
| 124 | 4.28 | Release activities for non-core applications |  | 7d? | 2011-10-20 | 2011-10-28 | 122, 121 |  |  | 0d |  | start no earlier than 2011-08-22 | Prasad [50%] | 28h |  |
| 125 | 4.29 | (Target release date - 2010 "current") | milestone | 0d | 2011-08-11 | 2011-08-11 |  |  |  | 56d |  | start no earlier than 2011-08-11 |  |  |  |
| 126 | 4.30 | (Target release date - 2010 "future") | milestone | 0d | 2011-08-25 | 2011-08-25 |  |  |  | 46d |  | start no earlier than 2011-08-25 |  |  |  |
| 129 | 5 | **UPT Improvement Plan** |  | 156.25d? | 2011-03-14 A | 2011-10-21 |  | 74% | 40.37d? | 5.75d |  |  |  | 78h | 72h |
| 130 | 5.1 | Analysis of existing trackers |  | 6d | 2011-03-14 A | 2011-03-21 A |  | 100% |  |  |  | start no earlier than 2011-03-14 | Prasad | 48h | 48h |
| 131 | 5.2 | Requirements gathering with NBIA |  | 20d? | 2011-03-28 A | 2011-04-22 A |  | 100% |  |  |  | start no earlier than 2011-03-28 |  |  |  |
| 132 | 5.3 | Draft project plan development (partial) |  | 2d | 2011-05-13 A | 2011-05-16 A | 130, 131FF | 100% |  |  |  | start no earlier than 2011-05-13 |  |  |  |
| 133 | 5.4 | Internal review of proposed features |  | 0.25d | 2011-05-27 A | 2011-05-27 A | 132 | 100% |  |  |  | start no earlier than 2011-05-27 |  |  |  |
| 134 | 5.5 | **Research on use of systems-hosted older versions** |  | 79d? | 2011-06-13 A | 2011-10-03 | 133 | 82% | 14.36d? | 5.75d | 0d |  |  | 26h | 24h |
| 135 | 5.5.1 | Formulate initial query |  | 1d | 2011-06-13 A | 2011-06-13 A |  | 100% |  |  |  | start no earlier than 2011-06-13 | Greg [25%] | 2h | 2h |
| 136 | 5.5.2 | Lead time and systems response (est.) |  | 10d? | 2011-06-14 A | 2011-06-27 A | 135 | 100% |  |  |  |  |  |  |  |
| 137 | 5.5.3 | Formulate subsequent queries |  | 6d | 2011-06-28 A | 2011-07-06 A | 136 | 100% |  |  |  |  | Greg [25%] | 12h | 12h |
| 138 | 5.5.4 | Lead time and systems response (est.) |  | 5d? | 2011-07-07 A | 2011-07-13 A | 137 | 100% |  |  |  |  |  |  |  |
| 139 | 5.5.5 | Determine why subsequent queries returned no results and re-submit |  | 6d | 2011-08-02 A | 2011-09-26 |  | 83% | 1d | 5.75d | 0d | start no earlier than 2011-08-02 | Greg [25%] | 12h | 10h |
| 140 | 5.5.6 | Lead time and systems response (est.) |  | 5d? | 2011-09-27 | 2011-10-03 | 139 |  |  | 5.75d |  | start no earlier than 2011-08-02 |  |  |  |
| 141 | 5.6 | Follow up review of proposed features |  | 0.25d | 2011-10-04 | 2011-10-04 | 134 |  |  | 5.75d | 0d | start no earlier than 2011-06-01 |  |  |  |
| 142 | 5.7 | Draft project plan (complete) |  | 2d | 2011-10-04 | 2011-10-06 | 141 |  |  | 5.75d | 0d | start no earlier than 2011-06-27 | Greg [25%] | 4h |  |
| 143 | 5.8 | Review plan with user representatives and amend |  | 10d? | 2011-10-06 | 2011-10-20 | 142 |  |  | 5.75d | 0d |  |  |  |  |
| 144 | 5.9 | Plan approval |  | 1d? | 2011-10-20 | 2011-10-21 | 143 |  |  | 5.75d |  |  |  |  |  |

| ID | WBS | Task | Duration | Start | Finish | Predecessors | Complete | Remaining | Total slack | Free slack | Constraint | Resources | Work | Actual work |
| --- | --- | --- | --- | --- | --- | --- | --- | --- | --- | --- | --- | --- | --- | --- |
| 147 | 6 | **UPT enhancements [changes expected]** | 110d | 2011-10-31 | 2012-03-30 | 129, 39 |  |  | 0d |  |  |  |  |  |
| 148 | 6.1 | GF 30436 Better LDAP integration when adding users to UPT | 5d | 2011-10-31 | 2011-11-04 |  |  |  | 0d |  |  |  |  |  |
| 149 | 6.2 | GF 22524 Authentication - DataSource LoginModule | 3d | 2011-11-07 | 2011-11-09 | 148 |  |  | 0d |  |  |  |  |  |
| 150 | 6.3 | GF 1158/2830 Implement paging for UPT | 10d | 2011-11-10 | 2011-11-23 | 149 |  |  | 0d |  |  |  |  |  |
| 151 | 6.4 | GF 22540/29002/30435 Password changes | 10d | 2011-11-24 | 2011-12-07 | 150 |  |  | 0d |  |  |  |  |  |
| 152 | 6.5 | GF 15527 CSM username field length should be increased to 100 characters | 1d | 2011-12-08 | 2011-12-08 | 151 |  |  | 0d |  |  |  |  |  |
| 153 | 6.6 | GF 19369 Indicate UPT /CSM version names in the Application Header after login | 2d | 2011-12-09 | 2011-12-12 | 152 |  |  | 0d |  |  |  |  |  |
| 154 | 6.7 | GF 631/22236 Password recovery | 5d | 2011-12-13 | 2011-12-19 | 153 |  |  | 0d |  |  |  |  |  |
| 155 | 6.8 | GF 30019 User lockout on unsuccessful logins | 5d | 2011-12-20 | 2011-12-26 | 154 |  |  | 0d |  |  |  |  |  |
| 156 | 6.9 | GF 2913 Add an Active Flag for users | 5d | 2011-12-27 | 2012-01-02 | 155 |  |  | 0d |  |  |  |  |  |
| 157 | 6.10 | GF 24404 UPT GUI installer should validate database connection info | 3d | 2012-01-03 | 2012-01-05 | 156 |  |  | 0d |  |  |  |  |  |
| 158 | 6.11 | GF 30372 Change UPT install.properties file to note properties that must be replaced | 1d | 2012-01-06 | 2012-01-06 | 157 |  |  | 0d |  |  |  |  |  |
| 159 | 6.12 | GF 1154/30433 Synchronization between UPT and supported application | 15d | 2012-01-09 | 2012-01-27 | 158 |  |  | 0d |  |  |  |  |  |
| 160 | 6.13 | GF 24965 Documentation changes from CDL installation | 1d | 2012-01-30 | 2012-01-30 | 159 |  |  | 0d |  |  |  |  |  |
| 161 | 6.14 | GF 24116 Need stronger access control | 10d | 2012-01-31 | 2012-02-13 | 160 |  |  | 0d |  |  |  |  |  |
| 162 | 6.15 | GF 2914 Auto-email new user or associated user | 4d | 2012-02-14 | 2012-02-17 | 161 |  |  | 0d |  |  |  |  |  |
| 163 | 6.16 | User friendly UPT UI | 15d | 2012-02-20 | 2012-03-09 | 162 |  |  | 0d |  |  |  |  |  |
| 164 | 6.17 | Customizable UPT UI | 15d | 2012-03-12 | 2012-03-30 | 163 |  |  | 0d |  |  |  |  |  |
| 167 | 7 | **XMI Handler** | 40d? | 2011-08-17 A | 2011-10-12 |  | 14% | 34.29d? | 122d |  |  |  | 8h | 4h |
| 168 | 7.1 | Test use of new XMI Handler modeling features with SIW and document results | 4d | 2011-08-17 A | 2011-09-28 |  | 50% | 2d | 122d | 0d | start no earlier than 2011-08-17 | Greg [25%] | 8h | 4h |
| 169 | 7.2 | Coordinate official 1.1 release | 5d? | 2011-09-29 | 2011-10-05 | 168 |  |  | 122d | 0d | start no earlier than 2011-06-29 |  |  |  |
| 170 | 7.3 | Coordinate 1.2 release (tech stack upgrade)? | 5d? | 2011-10-06 | 2011-10-12 | 56, 169 |  |  | 122d |  | start no earlier than 2011-06-30 |  |  |  |
| 173 | 8 | **Analysis** | 159d | 2011-03-22 A | 2011-11-02 |  | 67% | 52.04d | 107d |  |  |  | 278h | 216h |
| 174 | 8.1 | **older completed tasks** | 93d | 2011-03-22 A | 2011-08-01 A |  | 100% |  |  |  |  |  | 206h | 206h |
| 175 | 8.1.1 | Eclipse/SDK comparison and gap analysis | 5d | 2011-03-22 A | 2011-03-28 A |  | 100% |  |  |  | start no earlier than 2011-03-22 | Prasad | 40h | 40h |
| 176 | 8.1.2 | User requirements/need for SDK (combined with Eclipse/SDK analysis) | 3d | 2011-04-15 A | 2011-04-19 A |  | 100% |  |  |  | start no earlier than 2011-04-15 | Prasad [75%] | 18h | 18h |
| 177 | 8.1.3 | caGrid with JBoss 5.1 | 3d | 2011-05-05 A | 2011-05-12 A |  | 100% |  |  |  | start no earlier than 2011-05-05 | Prasad | 24h | 24h |
| 178 | 8.1.4 | Ideal architecture for separation of SDK and caGrid [incomplete, deferred indefinitely] | 2d | 2011-06-09 A | 2011-06-10 A |  | 100% |  |  |  | start no earlier than 2011-06-09 | Prasad [50%] | 8h | 8h |
| 179 | 8.1.5 | Test Globus WSRF (caGrid) and JBoss 5.1 | 1d | 2011-06-13 A | 2011-06-13 A |  | 100% |  |  |  | start no earlier than 2011-06-13 | Prasad | 8h | 8h |
| 180 | 8.1.6 | Evaluate caTissue source with respect to potential use of SDK | 3d | 2011-06-16 A | 2011-06-20 A |  | 100% |  |  |  | start no earlier than 2011-06-16 | Prasad | 24h | 24h |
| 181 | 8.1.7 | Review and revise caTissue/SDK analysis | 1d | 2011-06-21 A | 2011-06-21 A | 180 | 100% |  |  |  |  | Prasad | 8h | 8h |
| 182 | 8.1.8 | caTissue Jamboree | 3d | 2011-06-22 A | 2011-06-24 A |  | 100% |  |  |  | finish no earlier than 2011-06-24 | Prasad [50%] | 12h | 12h |
| 183 | 8.1.9 | NBIA security discussion on federated grid credentials | 2d | 2011-06-29 A | 2011-06-30 A |  | 100% |  |  |  | start no earlier than 2011-06-29 | Prasad [25%] | 4h | 4h |
| 184 | 8.1.10 | ISO/SDK use - examples and presentation | 3d | 2011-07-13 A | 2011-07-15 A |  | 100% |  |  |  | start no earlier than 2011-07-13 | Prasad | 24h | 24h |
| 185 | 8.1.11 | SDK capabilities documentation & presentation support | 2d | 2011-07-25 A | 2011-07-26 A |  | 100% |  |  |  | start no earlier than 2011-07-25 | Prasad [75%] | 12h | 12h |
| 186 | 8.1.12 | ISO/SDK use - examples and presentation (revisited) | 4d | 2011-07-27 A | 2011-08-01 A |  | 100% |  |  |  | start no earlier than 2011-07-27 | Prasad [75%] | 24h | 24h |
| 187 | 8.2 | REST support for non-SDK applications - research | 10d | 2011-09-12 | 2011-09-23 | 69 |  |  | 135d |  | start no earlier than 2011-08-29 | Prasad [50%] | 40h |  |
| 188 | 8.3 | Ideal architecture for separation of SDK and caGrid | 3d | 2011-10-31 | 2011-11-02 | 124 |  |  | 106d | 0d | start no earlier than 2011-07-18 | Prasad [50%] | 12h |  |
| 189 | 8.4 | Investigate problem with caGrid-flavored CQL and SDK 4.4 w/ ISO data types despite workaround | 10d | 2011-07-18 A | 2011-09-30 |  | 50% | 5d | 130d |  | start no earlier than 2011-07-18 | Dan [25%] | 20h | 10h |

| ID | WBS | Task | Type | Duration | Start | Finish | Predecessors | Complete | Remaining | Total slack | Free slack | Constraint | Resources | Work | Actual work |
| --- | --- | --- | --- | --- | --- | --- | --- | --- | --- | --- | --- | --- | --- | --- | --- |
| 192 | 9 | **CSM bug fixes (code - no release specified)** |  | 6d | 2011-03-14 A | 2011-03-21 A |  | 100% |  |  |  |  |  | 48h | 48h |
| 193 | 9.1 | GF 29450 CSM – Users locked out due to invalid logins may be (effectively) locked out forever |  | 5d | 2011-03-14 A | 2011-03-18 A |  | 100% |  |  |  | start no earlier than 2011-03-14 | Vijay | 40h | 40h |
| 194 | 9.2 | GF 30372 CSM/UPT - Change UPT install.properties file to note properties that must be replaced |  | 1d | 2011-03-21 A | 2011-03-21 A |  | 100% |  |  |  | start no earlier than 2011-03-21 | Vijay | 8h | 8h |
| 197 | 10 | **SDK 4.1.3 - GF 27529 patch to 4.1.2 (for caBIO)** |  | 0d | 2011-03-14 A | 2011-03-14 |  |  | 0d | 272d |  |  |  |  |  |
| 198 | 10.1 | apply fix for GF 27529 to 4.1.2 [already done] | milestone | 0d | 2011-03-14 A | 2011-03-14 A |  | 100% |  |  |  | start no earlier than 2011-03-14 |  |  |  |
| 199 | 10.2 | QA [low priority] [deferred indefinitely] | milestone | 0d | 2011-03-14 | 2011-03-14 | 198 |  |  | 272d | 0d | start no earlier than 2011-02-17 |  |  |  |
| 200 | 10.3 | Gforge post [no longer applicable] | milestone | 0d | 2011-03-14 | 2011-03-14 | 199 |  |  | 272d |  |  |  |  |  |
| 203 | 11 | **General support to date (only large tasks called out)** |  | 208d? | 2011-01-13 A | 2011-11-03 |  | 91% | 19.18d? | 106d |  |  |  | 230.8h | 219.6h |
| 204 | 11.1 | **older completed tasks** |  | 92d | 2011-03-22 A | 2011-07-29 A |  | 100% |  |  |  |  |  | 184.8h | 184.8h |
| 205 | 11.1.1 | General support through 6/3 |  | 53d | 2011-03-22 A | 2011-06-03 A |  | 100% |  |  |  | finish no earlier than 2011-06-03 | Dan [25%] | 106h | 106h |
| 206 | 11.1.2 | General support 6/6-6/10 |  | 5d | 2011-06-06 A | 2011-06-10 A |  | 100% |  |  |  | start no earlier than 2011-06-06 | Dan [25%] | 10h | 10h |
| 207 | 11.1.3 | General support 6/13-6/17 |  | 5d | 2011-06-13 A | 2011-06-17 A |  | 100% |  |  |  | start no earlier than 2011-06-13 | Dan [15%] | 6h | 6h |
| 208 | 11.1.4 | General support 6/20-6/24 |  | 5d | 2011-06-20 A | 2011-06-24 A |  | 100% |  |  |  | start no earlier than 2011-06-20 | Dan [15%] | 6h | 6h |
| 209 | 11.1.5 | General support 6/27-7/1 |  | 5d | 2011-06-27 A | 2011-07-01 A |  | 100% |  |  |  | start no earlier than 2011-06-27 | Dan [35%] | 14h | 14h |
| 210 | 11.1.6 | General support 7/5-7/8 |  | 4d | 2011-07-05 A | 2011-07-08 A |  | 100% |  |  |  | start no earlier than 2011-07-05 | Dan [15%] | 4.8h | 4.8h |
| 211 | 11.1.7 | General support 7/11-7/15 |  | 5d | 2011-07-11 A | 2011-07-15 A |  | 100% |  |  |  | start no earlier than 2011-07-11 | Dan [5%] | 2h | 2h |
| 212 | 11.1.8 | caTissue |  | 6d | 2011-07-11 A | 2011-07-18 A |  | 100% |  |  |  | start no earlier than 2011-07-11 | Greg [25%] | 12h | 12h |
| 213 | 11.1.9 | General support 7/18-7/23 |  | 5d | 2011-07-18 A | 2011-07-22 A |  | 100% |  |  |  | start no earlier than 2011-07-18 | Dan [10%] | 4h | 4h |
| 214 | 11.1.10 | 508 remediation (manual tests) for hosted UPT |  | 3d | 2011-07-20 A | 2011-07-22 A |  | 100% |  |  |  | start no earlier than 2011-07-20 | Greg [25%] | 6h | 6h |
| 215 | 11.1.11 | General support 7/25-7/29 |  | 5d | 2011-07-25 A | 2011-07-29 A |  | 100% |  |  |  | start no earlier than 2011-07-25 | Dan [15%] | 6h | 6h |
| 216 | 11.1.12 | caTissue (caGrid/SDK integration) |  | 4d | 2011-07-25 A | 2011-07-29 A |  | 100% |  |  |  | start no earlier than 2011-07-25 | Greg [25%] | 8h | 8h |
| 217 | 11.2 | General support 8/1-8/5 |  | 5d | 2011-08-01 A | 2011-08-05 A |  | 100% |  |  |  | start no earlier than 2011-08-01 | Dan [10%] | 4h | 4h |
| 218 | 11.3 | General support 8/8-8/12 |  | 5d | 2011-08-08 A | 2011-08-12 A |  | 100% |  |  |  | start no earlier than 2011-08-08 | Dan [10%] | 4h | 4h |
| 219 | 11.4 | CLOB modeling |  | 1d | 2011-08-12 A | 2011-08-12 A |  | 100% |  |  |  | start no earlier than 2011-08-12 | Prasad | 8h | 8h |
| 220 | 11.5 | General support 8/15-8/19 |  | 5d | 2011-08-15 A | 2011-08-19 A |  | 100% |  |  |  | start no earlier than 2011-08-15 | Dan [10%] | 4h | 4h |
| 221 | 11.6 | CSM connection pooling |  | 1d | 2011-08-16 A | 2011-08-16 A |  | 100% |  |  |  | start no earlier than 2011-08-16 | Prasad | 8h | 8h |
| 222 | 11.7 | General support 8/22-8/26 |  | 5d | 2011-08-22 A | 2011-08-26 A |  | 100% |  |  |  | start no earlier than 2011-08-22 | Dan [15%] | 6h | 6h |
| 223 | 11.8 | General support 8/29-9/2 |  | 5d | 2011-08-29 A | 2011-09-02 |  | 20% | 4d | 149d |  | start no earlier than 2011-08-29 | Dan [10%] | 4h | 0.8h |
| 224 | 11.9 | Document migration activities/issues moving from SDK 4.0 to 4.4 (using caDSR as an example) |  | 1d? | 2011-11-03 | 2011-11-03 | 188 |  |  | 106d |  | start no earlier than 2011-07-05 | Prasad | 8h |  |
| 225 | 11.10 | Write SDK product support FAQ’s and post on KC |  | 5d? | 2011-01-13 | 2011-01-19 |  |  |  | 309d |  | start no earlier than 2011-01-13 |  |  |  |
| 226 | 11.11 | Write CSM product support FAQ’s and post on KC |  | 3d? | 2011-01-13 | 2011-01-17 |  |  |  | 311d |  | start no earlier than 2011-01-13 |  |  |  |

| ID | WBS | Task | Duration | Start | Finish | Complete | Remaining | Total slack | Constraint | Resources | Work | Actual work |
| --- | --- | --- | --- | --- | --- | --- | --- | --- | --- | --- | --- | --- |
| 229 | 12 | **Project Management to date (only large tasks called out)** | 123d | 2011-03-14 A | 2011-09-02 | 97% | 4.28d | 149d |  |  | 356h | 348h |
| 230 | 12.1 | **older completed tasks** | 98d | 2011-03-14 A | 2011-07-29 A | 100% |  |  |  |  | 314h | 314h |
| 231 | 12.1.1 | PM and misc work through 6/3 | 59d | 2011-03-14 A | 2011-06-03 A | 100% |  |  | finish no earlier than 2011-06-03 | Greg [50%] | 236h | 236h |
| 232 | 12.1.2 | General PM 6/6-6/10 | 5d | 2011-06-06 A | 2011-06-10 A | 100% |  |  | start no earlier than 2011-06-06 | Greg [25%] | 10h | 10h |
| 233 | 12.1.3 | General PM 6/13-6/17 | 5d | 2011-06-13 A | 2011-06-17 A | 100% |  |  | start no earlier than 2011-06-13 | Greg [25%] | 10h | 10h |
| 234 | 12.1.4 | Update project management plan | 2d | 2011-06-22 A | 2011-06-23 A | 100% |  |  | start no earlier than 2011-06-22 | Greg [50%] | 8h | 8h |
| 235 | 12.1.5 | General PM 6/23-6/24 | 2d | 2011-06-23 A | 2011-06-24 A | 100% |  |  | start no earlier than 2011-06-23 | Greg [25%] | 4h | 4h |
| 236 | 12.1.6 | General PM 6/27-7/1 | 5d | 2011-06-27 A | 2011-07-01 A | 100% |  |  | start no earlier than 2011-06-27 | Greg [25%] | 10h | 10h |
| 237 | 12.1.7 | General PM 7/5-7/8 | 4d | 2011-07-05 A | 2011-07-08 A | 100% |  |  | start no earlier than 2011-07-05 | Greg [25%] | 8h | 8h |
| 238 | 12.1.8 | General PM 7/11-7/15 | 5d | 2011-07-11 A | 2011-07-15 A | 100% |  |  | start no earlier than 2011-07-11 | Greg [25%] | 10h | 10h |
| 239 | 12.1.9 | General PM 7/18-7/23 | 5d | 2011-07-18 A | 2011-07-22 A | 100% |  |  | start no earlier than 2011-07-18 | Greg [25%] | 10h | 10h |
| 240 | 12.1.10 | General PM 7/25-7/29 | 4d | 2011-07-25 A | 2011-07-29 A | 100% |  |  | start no earlier than 2011-07-25 | Greg [25%] | 8h | 8h |
| 241 | 12.2 | General PM 8/1-8/4 | 4d | 2011-08-01 A | 2011-08-04 A | 100% |  |  | start no earlier than 2011-08-01 | Greg [25%] | 8h | 8h |
| 242 | 12.3 | General PM 8/15-8/19 | 5d | 2011-08-15 A | 2011-08-19 A | 100% |  |  | start no earlier than 2011-08-15 | Greg [35%] | 14h | 14h |
| 243 | 12.4 | General PM 8/22-8/26 | 5d | 2011-08-22 A | 2011-08-26 A | 100% |  |  | finish no earlier than 2011-08-26 | Greg [25%] | 10h | 10h |
| 244 | 12.5 | General PM 8/29-9/2 | 5d | 2011-08-29 A | 2011-09-02 | 20% | 4d | 149d | start no earlier than 2011-08-29 | Greg [25%] | 10h | 2h |
| 247 | 13 | **Other unplanned** | 1d? | 2011-01-13 | 2011-01-13 |  |  | 313d |  |  |  |  |
| 248 | 13.1 | 508 compliance review and plan | 1d? | 2011-01-13 | 2011-01-13 |  |  | 313d | start no earlier than 2011-01-13 |  |  |  |
| 249 | 13.2 | ECCF compliance review and plan | 1d? | 2011-01-13 | 2011-01-13 |  |  | 313d | start no earlier than 2011-01-13 |  |  |  |
| 250 | 13.3 | Effect of NCI CBIIT’s Enterprise Security Program on CSM | 1d? | 2011-01-13 | 2011-01-13 |  |  | 313d | start no earlier than 2011-01-13 |  |  |  |
| 251 | 13.4 | Effect of NCI CBIIT’s Enterprise Security Program on CLM | 1d? | 2011-01-13 | 2011-01-13 |  |  | 313d | start no earlier than 2011-01-13 |  |  |  |
